# Planificacion(Borrador)

Schedule from MS Project, 2014-04-10 to 2015-02-10, 4 hours a day, costs in $, A marks actual dates.

## Calendars

- Sprints: Mon off; Tue 08:00-12:00; Wed off; Thu 08:00-12:00; Fri-Sat off; Sun 08:00-12:00.

## Resources

| Resource | Rate |
| --- | --- |
| Leo | 10 |
| Nacho | 10 |
| Eze | 10 |
| Lucas | 10 |
| Marcos | 10 |

## Schedule

| ID | WBS | Task | Type | Duration | Start | Finish | Predecessors | Remaining | Total slack | Free slack | Constraint | Resources | Work | Cost |
| --- | --- | --- | --- | --- | --- | --- | --- | --- | --- | --- | --- | --- | --- | --- |
| 1 | 1 | **Sistema de Gestion de Estacionamientos** |  | 132d | 2014-04-10 00:00 A | 2015-02-10 12:00 |  | 132d | 0d |  |  |  | 2055h | 20,520 |
| 2 | 1.1 | **Sprint 0** |  | 11d | 2014-04-10 00:00 A | 2014-05-04 18:00 |  | 11d | 1d |  | must start on 2014-04-10 00:00 |  | 395h | 3,950 |
| 3 | 1.1.1 | Realizar planning meeting 1 |  | 3h | 2014-04-10 08:00 | 2014-04-10 11:00 |  |  | 0d |  | must start on 2014-04-10 08:00 | Eze; Marcos; Leo; Lucas; Nacho | 15h | 150 |
| 4 | 1.1.2 | Propuesta Inicial |  | 16h | 2014-04-10 00:00 A | 2014-04-17 12:00 |  | 16h | 8d |  | start no earlier than 2014-04-10 00:00 | Eze; Marcos; Leo; Lucas; Nacho | 80h | 800 |
| 5 | 1.1.3 | Realizar WBS |  | 7d | 2014-04-17 00:00 A | 2014-05-01 12:00 |  | 7d | 0d |  | finish no earlier than 2014-05-01 12:00 | Eze; Marcos; Leo; Lucas; Nacho | 140h | 1,400 |
| 6 | 1.1.4 | Realizar Estudio Inicial |  | 7d | 2014-04-17 00:00 A | 2014-05-01 12:00 |  | 7d | 0d |  | finish no earlier than 2014-05-01 12:00 | Eze; Marcos; Leo; Lucas; Nacho | 140h | 1,400 |
| 7 | 1.1.5 | Presentacion Borrador Estudio Inicial | milestone | 0d | 2014-05-03 12:00 | 2014-05-03 12:00 | 6, 5 |  | 0d |  | must finish on 2014-05-03 12:00 | Eze; Marcos; Leo; Lucas; Nacho |  |  |
| 8 | 1.1.6 | Corregir WBS |  | 2h | 2014-05-04 08:00 | 2014-05-04 10:00 | 7 |  | 1.5d |  |  | Nacho; Eze | 4h | 40 |
| 9 | 1.1.7 | Corregir Estudio Inicial |  | 2h | 2014-05-04 08:00 | 2014-05-04 10:00 | 7 |  | 1.5d |  |  | Lucas; Leo; Marcos | 6h | 60 |
| 10 | 1.1.8 | Armar Product Backlog |  | 2h | 2014-05-04 10:00 | 2014-05-04 18:00 |  |  | 0d |  | must finish on 2014-05-04 18:00 | Eze; Marcos; Leo; Lucas; Nacho | 10h | 100 |
| 11 | 1.2 | **Sprint 1** |  | 6d | 2014-05-08 08:00 | 2014-05-20 12:00 | 2 |  | 0d |  |  |  | 100h | 1,000 |
| 12 | 1.2.1 | Realizar planning meeting 3 |  | 3h | 2014-05-08 08:00 | 2014-05-08 11:00 |  |  | 0d |  | must start on 2014-05-08 08:00 | Eze; Marcos; Leo; Lucas; Nacho | 15h | 150 |
| 13 | 1.2.2 | Capacitacion en SCRUM |  | 2h | 2014-05-08 11:00 | 2014-05-11 09:00 | 12 |  | 2.88d |  |  | Eze; Marcos; Leo; Lucas; Nacho | 10h | 100 |
| 14 | 1.2.3 | Capacitacion en MVC 4 |  | 4h | 2014-05-15 08:30 | 2014-05-18 08:30 | 12 |  | 0d |  | as late as possible | Eze; Marcos; Leo; Lucas; Nacho | 20h | 200 |
| 15 | 1.2.4 | Capacitacion en gestion de configuraciones |  | 1h | 2014-05-11 09:00 | 2014-05-11 10:00 | 12 |  | 2.62d |  |  | Eze; Marcos; Leo; Lucas; Nacho | 5h | 50 |
| 16 | 1.2.5 | Construccion de SW |  | 6h | 2014-05-18 08:30 | 2014-05-20 10:30 | 13, 14, 15 |  | 0d |  | start no earlier than 2014-05-08 08:00 | Eze; Marcos; Leo; Lucas; Nacho | 30h | 300 |
| 17 | 1.2.6 | Actualizar Product Backlog |  | 2h | 2014-05-11 09:00 | 2014-05-11 11:00 | 12 |  | 4.25d |  | start no earlier than 2014-05-08 08:00 | Eze; Marcos; Leo; Lucas; Nacho | 10h | 100 |
| 18 | 1.2.7 | Realizar review meeting 1 |  | 1.5h | 2014-05-20 10:30 | 2014-05-20 12:00 | 16 |  | 0d |  | must finish on 2014-05-20 12:00 | Eze; Marcos; Leo; Lucas; Nacho | 7.5h | 75 |
| 19 | 1.2.8 | Realizar retrospective meeting 1 |  | 0.5h | 2014-05-20 11:30 | 2014-05-20 12:00 | 18 |  | -0.12d | 0d | must finish on 2014-05-20 12:00 | Eze; Marcos; Leo; Lucas; Nacho | 2.5h | 25 |
| 20 | 4 | **Sprint 2** |  | 6d | 2014-05-22 08:00 | 2014-06-03 12:00 | 11 |  | 0d |  |  |  | 100h | 1,000 |
| 21 | 1.3.1 | Realizar planning meeting 4 |  | 3h | 2014-05-22 08:00 | 2014-05-22 11:00 | 19 |  | 0d |  | must start on 2014-05-22 08:00 | Leo; Nacho; Eze; Lucas; Marcos | 15h | 150 |
| 22 | 1.3.2 | Corregir bugs sprint anterior 1 |  | 3h | 2014-05-22 11:00 | 2014-05-25 10:00 | 21 |  | 1.12d | 0d | start no earlier than 2014-05-22 08:00 | Leo; Nacho; Eze; Lucas; Marcos | 15h | 150 |
| 23 | 1.3.3 | Preparar Presentacion del Estudio Inicial |  | 4h | 2014-05-25 10:00 | 2014-05-27 10:00 | 21 |  | 0.5d | 0d |  | Leo; Nacho; Eze; Lucas; Marcos | 20h | 200 |
| 24 | 1.3.4 | Construccion de SW |  | 8h | 2014-05-27 10:00 | 2014-06-01 10:00 | 22 |  | 1.12d |  | start no earlier than 2014-05-22 08:00 | Leo; Nacho; Eze; Lucas; Marcos | 40h | 400 |
| 25 | 1.3.5 | Presentar Estudio Inicial | milestone | 0d | 2014-05-27 10:00 | 2014-05-27 10:00 | 23 |  | 0.5d |  | finish no later than 2014-05-27 12:00 | Leo; Nacho; Eze; Lucas; Marcos |  |  |
| 26 | 1.3.6 | Realizar review meeting 2 |  | 1.5h | 2014-06-03 10:30 | 2014-06-03 12:00 | 24 |  | 0d |  | must finish on 2014-06-03 12:00 | Leo; Nacho; Eze; Lucas; Marcos | 7.5h | 75 |
| 27 | 1.3.7 | Realizar retrospective meeting 2 |  | 0.5h | 2014-06-03 11:30 | 2014-06-03 12:00 | 26 |  | -0.12d | 0d | must finish on 2014-06-03 12:00 | Leo; Nacho; Eze; Lucas; Marcos | 2.5h | 25 |

| ID | WBS | Task | Duration | Start | Finish | Predecessors | Total slack | Free slack | Constraint | Resources | Work | Cost |
| --- | --- | --- | --- | --- | --- | --- | --- | --- | --- | --- | --- | --- |
| 28 | 5 | **Sprint 3** | 6d | 2014-06-05 08:00 | 2014-06-17 12:00 | 20 | 0d |  |  |  | 100h | 1,000 |
| 29 | 1.4.1 | Realizar planning meeting 5 | 3h | 2014-06-05 08:00 | 2014-06-05 11:00 | 27 | 0d |  | must start on 2014-06-05 08:00 | Leo; Nacho; Eze; Lucas; Marcos | 15h | 150 |
| 30 | 1.4.2 | Preparar Presentacion del Estudio Inicial | 4h | 2014-06-12 10:00 | 2014-06-15 10:00 | 29 | 1.5d |  |  | Leo; Nacho; Eze; Lucas; Marcos | 20h | 200 |
| 31 | 1.4.3 | Corregir bugs sprint anterior 2 | 3h | 2014-06-05 11:00 | 2014-06-08 10:00 | 29 | 2.12d | 0d | start no earlier than 2014-06-05 08:00 | Leo; Nacho; Eze; Lucas; Marcos | 15h | 150 |
| 32 | 1.4.4 | Construccion de SW | 8h | 2014-06-08 10:00 | 2014-06-12 10:00 | 31 | 2.12d |  | start no earlier than 2014-05-22 08:00 | Leo; Nacho; Eze; Lucas; Marcos | 40h | 400 |
| 33 | 1.4.5 | Realizar review meeting 3 | 1.5h | 2014-06-17 10:30 | 2014-06-17 12:00 | 32 | 0d |  | must finish on 2014-06-17 12:00 | Leo; Nacho; Eze; Lucas; Marcos | 7.5h | 75 |
| 34 | 1.4.6 | Realizar retrospective meeting 3 | 0.5h | 2014-06-17 11:30 | 2014-06-17 12:00 | 33 | -0.12d | 0d | must finish on 2014-06-17 12:00 | Leo; Nacho; Eze; Lucas; Marcos | 2.5h | 25 |
| 35 | 6 | **Sprint 4** | 6d | 2014-06-19 08:00 | 2014-07-01 12:00 | 28 | 0d |  |  |  | 80h | 800 |
| 36 | 1.5.1 | Realizar planning meeting 6 | 3h | 2014-06-19 08:00 | 2014-06-19 11:00 | 34 | 0d |  | must start on 2014-06-19 08:00 | Leo; Nacho; Eze; Lucas; Marcos | 15h | 150 |
| 37 | 1.5.2 | Corregir bugs sprint anterior 3 | 3h | 2014-06-19 11:00 | 2014-06-22 10:00 | 36 | 2.12d | 0d | start no earlier than 2014-06-19 08:00 | Leo; Nacho; Eze; Lucas; Marcos | 15h | 150 |
| 38 | 1.5.3 | Construccion de SW | 8h | 2014-06-22 10:00 | 2014-06-26 10:00 | 37 | 2.12d |  | start no earlier than 2014-05-22 08:00 | Leo; Nacho; Eze; Lucas; Marcos | 40h | 400 |
| 39 | 1.5.4 | Realizar review meeting 4 | 1.5h | 2014-07-01 10:30 | 2014-07-01 12:00 | 38 | 0d |  | must finish on 2014-07-01 12:00 | Leo; Nacho; Eze; Lucas; Marcos | 7.5h | 75 |
| 40 | 1.5.5 | Realizar retrospective meeting 4 | 0.5h | 2014-07-01 11:30 | 2014-07-01 12:00 | 39 | -0.12d | 0d | must finish on 2014-07-01 12:00 | Leo; Nacho; Eze; Lucas; Marcos | 2.5h | 25 |
| 41 | 7 | **Sprint 5** | 6d | 2014-07-03 08:00 | 2014-07-15 12:00 | 36 | 0d |  |  |  | 80h | 800 |
| 42 | 1.6.1 | Realizar planning meeting 7 | 3h | 2014-07-03 08:00 | 2014-07-03 11:00 | 40 | 0d |  | must start on 2014-07-03 08:00 | Leo; Nacho; Eze; Lucas; Marcos | 15h | 150 |
| 43 | 1.6.2 | Corregir bugs sprint anterior 4 | 3h | 2014-07-03 11:00 | 2014-07-06 10:00 | 42 | 2.12d | 0d | start no earlier than 2014-07-03 08:00 | Leo; Nacho; Eze; Lucas; Marcos | 15h | 150 |
| 44 | 1.6.3 | Construccion de SW | 8h | 2014-07-06 10:00 | 2014-07-10 10:00 | 43 | 2.12d |  | start no earlier than 2014-05-22 08:00 | Leo; Nacho; Eze; Lucas; Marcos | 40h | 400 |
| 45 | 1.6.4 | Realizar review meeting 5 | 1.5h | 2014-07-15 10:30 | 2014-07-15 12:00 | 44 | 0d |  | must finish on 2014-07-15 12:00 | Leo; Nacho; Eze; Lucas; Marcos | 7.5h | 75 |
| 46 | 1.6.5 | Realizar retrospective meeting 5 | 0.5h | 2014-07-15 11:30 | 2014-07-15 12:00 | 45 | -0.12d | 0d | must finish on 2014-07-15 12:00 | Leo; Nacho; Eze; Lucas; Marcos | 2.5h | 25 |
| 47 | 8 | **Sprint 6** | 6d | 2014-07-17 08:00 | 2014-07-29 12:00 | 42 | 0d |  |  |  | 80h | 800 |
| 48 | 1.7.1 | Realizar planning meeting 8 | 3h | 2014-07-17 08:00 | 2014-07-17 11:00 | 46 | 0d |  | must start on 2014-07-17 08:00 | Leo; Nacho; Eze; Lucas; Marcos | 15h | 150 |
| 49 | 1.7.2 | Corregir bugs sprint anterior 5 | 3h | 2014-07-17 11:00 | 2014-07-20 10:00 | 48 | 2.12d | 0d | start no earlier than 2014-07-17 08:00 | Leo; Nacho; Eze; Lucas; Marcos | 15h | 150 |
| 50 | 1.7.3 | Construccion de SW | 8h | 2014-07-20 10:00 | 2014-07-24 10:00 | 49 | 2.12d |  | start no earlier than 2014-05-22 08:00 | Leo; Nacho; Eze; Lucas; Marcos | 40h | 400 |
| 51 | 1.7.4 | Realizar review meeting 6 | 1.5h | 2014-07-29 10:30 | 2014-07-29 12:00 | 50 | 0d |  | must finish on 2014-07-29 12:00 | Leo; Nacho; Eze; Lucas; Marcos | 7.5h | 75 |
| 52 | 1.7.5 | Realizar retrospective meeting 6 | 0.5h | 2014-07-29 11:30 | 2014-07-29 12:00 | 51 | -0.12d | 0d | must finish on 2014-07-29 12:00 | Leo; Nacho; Eze; Lucas; Marcos | 2.5h | 25 |

| ID | WBS | Task | Duration | Start | Finish | Predecessors | Total slack | Free slack | Constraint | Resources | Work | Cost |
| --- | --- | --- | --- | --- | --- | --- | --- | --- | --- | --- | --- | --- |
| 53 | 9 | **Sprint 7** | 6d | 2014-07-31 08:00 | 2014-08-12 12:00 |  | 0d |  |  |  | 80h | 800 |
| 54 | 1.8.1 | Realizar planning meeting 9 | 3h | 2014-07-31 08:00 | 2014-07-31 11:00 | 52 | 0d |  | must start on 2014-07-31 08:00 | Leo; Nacho; Eze; Lucas; Marcos | 15h | 150 |
| 55 | 1.8.2 | Corregir bugs sprint anterior 6 | 3h | 2014-07-31 11:00 | 2014-08-03 10:00 | 54 | 2.12d | 0d | start no earlier than 2014-07-31 08:00 | Leo; Nacho; Eze; Lucas; Marcos | 15h | 150 |
| 56 | 1.8.3 | Construccion de SW | 8h | 2014-08-03 10:00 | 2014-08-07 10:00 | 55 | 2.12d |  | start no earlier than 2014-05-22 08:00 | Leo; Nacho; Eze; Lucas; Marcos | 40h | 400 |
| 57 | 1.8.4 | Realizar review meeting 7 | 1.5h | 2014-08-12 10:30 | 2014-08-12 12:00 | 56 | 0d |  | must finish on 2014-08-12 12:00 | Leo; Nacho; Eze; Lucas; Marcos | 7.5h | 75 |
| 58 | 1.8.5 | Realizar retrospective meeting 7 | 0.5h | 2014-08-12 11:30 | 2014-08-12 12:00 | 57 | -0.12d | 0d | must finish on 2014-08-12 12:00 | Leo; Nacho; Eze; Lucas; Marcos | 2.5h | 25 |
| 59 | 10 | **Sprint 8** | 6d | 2014-08-14 08:00 | 2014-08-26 12:00 | 54 | 0d |  |  |  | 80h | 800 |
| 60 | 1.9.1 | Realizar planning meeting 10 | 3h | 2014-08-14 08:00 | 2014-08-14 11:00 | 58 | 0d |  | must start on 2014-08-14 08:00 | Leo; Nacho; Eze; Lucas; Marcos | 15h | 150 |
| 61 | 1.9.2 | Corregir bugs sprint anterior 7 | 3h | 2014-08-14 11:00 | 2014-08-17 10:00 | 60 | 2.12d | 0d | start no earlier than 2014-08-14 08:00 | Leo; Nacho; Eze; Lucas; Marcos | 15h | 150 |
| 62 | 1.9.3 | Construccion de SW | 8h | 2014-08-17 10:00 | 2014-08-21 10:00 | 61 | 2.12d |  | start no earlier than 2014-05-22 08:00 | Leo; Nacho; Eze; Lucas; Marcos | 40h | 400 |
| 63 | 1.9.4 | Realizar review meeting 8 | 1.5h | 2014-08-26 10:30 | 2014-08-26 12:00 | 62 | 0d |  | must finish on 2014-08-26 12:00 | Leo; Nacho; Eze; Lucas; Marcos | 7.5h | 75 |
| 64 | 1.9.5 | Realizar retrospective meeting 8 | 0.5h | 2014-08-26 11:30 | 2014-08-26 12:00 | 63 | -0.12d | 0d | must finish on 2014-08-26 12:00 | Leo; Nacho; Eze; Lucas; Marcos | 2.5h | 25 |
| 65 | 11 | **Sprint 9** | 6d | 2014-08-28 08:00 | 2014-09-09 12:00 | 60 | 0d |  |  |  | 80h | 800 |
| 66 | 1.10.1 | Realizar planning meeting 11 | 3h | 2014-08-28 08:00 | 2014-08-28 11:00 | 64 | 0d |  | must start on 2014-08-28 08:00 | Leo; Nacho; Eze; Lucas; Marcos | 15h | 150 |
| 67 | 1.10.2 | Corregir bugs sprint anterior 8 | 3h | 2014-08-28 11:00 | 2014-08-31 10:00 | 66 | 2.12d | 0d | start no earlier than 2014-08-28 08:00 | Leo; Nacho; Eze; Lucas; Marcos | 15h | 150 |
| 68 | 1.10.3 | Construccion de SW | 8h | 2014-08-31 10:00 | 2014-09-04 10:00 | 67 | 2.12d |  | start no earlier than 2014-05-22 08:00 | Leo; Nacho; Eze; Lucas; Marcos | 40h | 400 |
| 69 | 1.10.4 | Realizar review meeting 9 | 1.5h | 2014-09-09 10:30 | 2014-09-09 12:00 | 68 | 0d |  | must finish on 2014-09-09 12:00 | Leo; Nacho; Eze; Lucas; Marcos | 7.5h | 75 |
| 70 | 1.10.5 | Realizar retrospective meeting 9 | 0.5h | 2014-09-09 11:30 | 2014-09-09 12:00 | 69 | -0.12d | 0d | must finish on 2014-09-09 12:00 | Leo; Nacho; Eze; Lucas; Marcos | 2.5h | 25 |
| 71 | 12 | **Sprint 10** | 6d | 2014-09-11 08:00 | 2014-09-23 12:00 | 66 | 0d |  |  |  | 80h | 800 |
| 72 | 1.11.1 | Realizar planning meeting 12 | 3h | 2014-09-11 08:00 | 2014-09-11 11:00 | 70 | 0d |  | must start on 2014-09-11 08:00 | Leo; Nacho; Eze; Lucas; Marcos | 15h | 150 |
| 73 | 1.11.2 | Corregir bugs sprint anterior 9 | 3h | 2014-09-11 11:00 | 2014-09-14 10:00 | 72 | 2.12d | 0d | start no earlier than 2014-09-11 08:00 | Leo; Nacho; Eze; Lucas; Marcos | 15h | 150 |
| 74 | 1.11.3 | Construccion de SW | 8h | 2014-09-14 10:00 | 2014-09-18 10:00 | 73 | 2.12d |  | start no earlier than 2014-05-22 08:00 | Leo; Nacho; Eze; Lucas; Marcos | 40h | 400 |
| 75 | 1.11.4 | Realizar review meeting 10 | 1.5h | 2014-09-23 10:30 | 2014-09-23 12:00 | 74 | 0d |  | must finish on 2014-09-23 12:00 | Leo; Nacho; Eze; Lucas; Marcos | 7.5h | 75 |
| 76 | 1.11.5 | Realizar retrospective meeting 10 | 0.5h | 2014-09-23 11:30 | 2014-09-23 12:00 | 75 | -0.12d | 0d | must finish on 2014-09-23 12:00 | Leo; Nacho; Eze; Lucas; Marcos | 2.5h | 25 |

| ID | WBS | Task | Duration | Start | Finish | Predecessors | Total slack | Free slack | Constraint | Resources | Work | Cost |
| --- | --- | --- | --- | --- | --- | --- | --- | --- | --- | --- | --- | --- |
| 77 | 13 | **Sprint 11** | 6d | 2014-09-25 08:00 | 2014-10-07 12:00 | 72 | 0d |  |  |  | 80h | 800 |
| 78 | 1.12.1 | Realizar planning meeting 13 | 3h | 2014-09-25 08:00 | 2014-09-25 11:00 | 76 | 0d |  | must start on 2014-09-25 08:00 | Leo; Nacho; Eze; Lucas; Marcos | 15h | 150 |
| 79 | 1.12.2 | Corregir bugs sprint anterior 10 | 3h | 2014-09-25 11:00 | 2014-09-28 10:00 | 78 | 2.12d | 0d | start no earlier than 2014-09-25 08:00 | Leo; Nacho; Eze; Lucas; Marcos | 15h | 150 |
| 80 | 1.12.3 | Construccion de SW | 8h | 2014-09-28 10:00 | 2014-10-02 10:00 | 79 | 2.12d |  | start no earlier than 2014-05-22 08:00 | Leo; Nacho; Eze; Lucas; Marcos | 40h | 400 |
| 81 | 1.12.4 | Realizar review meeting 11 | 1.5h | 2014-10-07 10:30 | 2014-10-07 12:00 | 80 | 0d |  | must finish on 2014-10-07 12:00 | Leo; Nacho; Eze; Lucas; Marcos | 7.5h | 75 |
| 82 | 1.12.5 | Realizar retrospective meeting 11 | 0.5h | 2014-10-07 11:30 | 2014-10-07 12:00 | 81 | -0.12d | 0d | must finish on 2014-10-07 12:00 | Leo; Nacho; Eze; Lucas; Marcos | 2.5h | 25 |
| 83 | 14 | **Sprint 12** | 6d | 2014-10-09 08:00 | 2014-10-21 12:00 |  | 0d |  |  |  | 80h | 800 |
| 84 | 1.13.1 | Realizar planning meeting 14 | 3h | 2014-10-09 08:00 | 2014-10-09 11:00 | 82 | 0d |  | must start on 2014-10-09 08:00 | Leo; Nacho; Eze; Lucas; Marcos | 15h | 150 |
| 85 | 1.13.2 | Corregir bugs sprint anterior 11 | 3h | 2014-10-09 11:00 | 2014-10-12 10:00 | 84 | 2.12d | 0d | start no earlier than 2014-10-09 08:00 | Leo; Nacho; Eze; Lucas; Marcos | 15h | 150 |
| 86 | 1.13.3 | Construccion de SW | 8h | 2014-10-12 10:00 | 2014-10-16 10:00 | 85 | 2.12d |  | start no earlier than 2014-05-22 08:00 | Leo; Nacho; Eze; Lucas; Marcos | 40h | 400 |
| 87 | 1.13.4 | Realizar review meeting 12 | 1.5h | 2014-10-21 10:30 | 2014-10-21 12:00 | 86 | 0d |  | must finish on 2014-10-21 12:00 | Leo; Nacho; Eze; Lucas; Marcos | 7.5h | 75 |
| 88 | 1.13.5 | Realizar retrospective meeting 12 | 0.5h | 2014-10-21 11:30 | 2014-10-21 12:00 | 87 | -0.12d | 0d | must finish on 2014-10-21 12:00 | Leo; Nacho; Eze; Lucas; Marcos | 2.5h | 25 |
| 89 | 15 | **Sprint 13** | 6d | 2014-10-23 08:00 | 2014-11-04 12:00 | 84 | 0d |  |  |  | 80h | 800 |
| 90 | 1.14.1 | Realizar planning meeting 15 | 3h | 2014-10-23 08:00 | 2014-10-23 11:00 | 88 | 0d |  | must start on 2014-10-23 08:00 | Leo; Nacho; Eze; Lucas; Marcos | 15h | 150 |
| 91 | 1.14.2 | Corregir bugs sprint anterior 12 | 3h | 2014-10-23 11:00 | 2014-10-26 10:00 | 90 | 2.12d | 0d | start no earlier than 2014-10-23 08:00 | Leo; Nacho; Eze; Lucas; Marcos | 15h | 150 |
| 92 | 1.14.3 | Construccion de SW | 8h | 2014-10-26 10:00 | 2014-10-30 10:00 | 91 | 2.12d |  | start no earlier than 2014-05-22 08:00 | Leo; Nacho; Eze; Lucas; Marcos | 40h | 400 |
| 93 | 1.14.4 | Realizar review meeting 13 | 1.5h | 2014-11-04 10:30 | 2014-11-04 12:00 | 92 | 0d |  | must finish on 2014-11-04 12:00 | Leo; Nacho; Eze; Lucas; Marcos | 7.5h | 75 |
| 94 | 1.14.5 | Realizar retrospective meeting 13 | 0.5h | 2014-11-04 11:30 | 2014-11-04 12:00 | 93 | -0.12d | 0d | must finish on 2014-11-04 12:00 | Leo; Nacho; Eze; Lucas; Marcos | 2.5h | 25 |
| 95 | 16 | **Sprint 14** | 6d | 2014-11-06 08:00 | 2014-11-18 12:00 |  | 0d |  |  |  | 80h | 800 |
| 96 | 1.15.1 | Realizar planning meeting 16 | 3h | 2014-11-06 08:00 | 2014-11-06 11:00 | 94 | 0d |  | must start on 2014-11-06 08:00 | Leo; Nacho; Eze; Lucas; Marcos | 15h | 150 |
| 97 | 1.15.2 | Corregir bugs sprint anterior 13 | 3h | 2014-11-06 11:00 | 2014-11-09 10:00 | 96 | 2.12d | 0d | start no earlier than 2014-11-06 08:00 | Leo; Nacho; Eze; Lucas; Marcos | 15h | 150 |
| 98 | 1.15.3 | Construccion de SW | 8h | 2014-11-09 10:00 | 2014-11-13 10:00 | 97 | 2.12d |  | start no earlier than 2014-05-22 08:00 | Leo; Nacho; Eze; Lucas; Marcos | 40h | 400 |
| 99 | 1.15.4 | Realizar review meeting 14 | 1.5h | 2014-11-18 10:30 | 2014-11-18 12:00 | 98 | 0d |  | must finish on 2014-11-18 12:00 | Leo; Nacho; Eze; Lucas; Marcos | 7.5h | 75 |
| 100 | 1.15.5 | Realizar retrospective meeting 14 | 0.5h | 2014-11-18 11:30 | 2014-11-18 12:00 | 99 | -0.12d | 0d | must finish on 2014-11-18 12:00 | Leo; Nacho; Eze; Lucas; Marcos | 2.5h | 25 |

| ID | WBS | Task | Duration | Start | Finish | Predecessors | Total slack | Free slack | Constraint | Resources | Work | Cost |
| --- | --- | --- | --- | --- | --- | --- | --- | --- | --- | --- | --- | --- |
| 101 | 17 | **Sprint 15** | 6d | 2014-11-20 08:00 | 2014-12-02 12:00 | 96 | 0d |  |  |  | 80h | 800 |
| 102 | 1.16.1 | Realizar planning meeting 17 | 3h | 2014-11-20 08:00 | 2014-11-20 11:00 | 100 | 0d |  | must start on 2014-11-20 08:00 | Leo; Nacho; Eze; Lucas; Marcos | 15h | 150 |
| 103 | 1.16.2 | Corregir bugs sprint anterior 14 | 3h | 2014-11-20 11:00 | 2014-11-23 10:00 | 102 | 2.12d | 0d | start no earlier than 2014-11-20 08:00 | Leo; Nacho; Eze; Lucas; Marcos | 15h | 150 |
| 104 | 1.16.3 | Construccion de SW | 8h | 2014-11-23 10:00 | 2014-11-27 10:00 | 103 | 2.12d |  | start no earlier than 2014-05-22 08:00 | Leo; Nacho; Eze; Lucas; Marcos | 40h | 400 |
| 105 | 1.16.4 | Realizar review meeting 15 | 1.5h | 2014-12-02 10:30 | 2014-12-02 12:00 | 104 | 0d |  | must finish on 2014-12-02 12:00 | Leo; Nacho; Eze; Lucas; Marcos | 7.5h | 75 |
| 106 | 1.16.5 | Realizar retrospective meeting 15 | 0.5h | 2014-12-02 11:30 | 2014-12-02 12:00 | 105 | -0.12d | 0d | must finish on 2014-12-02 12:00 | Leo; Nacho; Eze; Lucas; Marcos | 2.5h | 25 |
| 107 | 18 | **Sprint 16** | 6d | 2014-12-04 08:00 | 2014-12-16 12:00 | 102 | 0d |  |  |  | 80h | 800 |
| 108 | 1.17.1 | Realizar planning meeting 18 | 3h | 2014-12-04 08:00 | 2014-12-04 11:00 | 106 | 0d |  | must start on 2014-12-04 08:00 | Leo; Nacho; Eze; Lucas; Marcos | 15h | 150 |
| 109 | 1.17.2 | Corregir bugs sprint anterior 15 | 3h | 2014-12-04 11:00 | 2014-12-07 10:00 | 108 | 2.12d | 0d | start no earlier than 2014-12-04 08:00 | Leo; Nacho; Eze; Lucas; Marcos | 15h | 150 |
| 110 | 1.17.3 | Construccion de SW | 8h | 2014-12-07 10:00 | 2014-12-11 10:00 | 109 | 2.12d |  | start no earlier than 2014-05-22 08:00 | Leo; Nacho; Eze; Lucas; Marcos | 40h | 400 |
| 111 | 1.17.4 | Realizar review meeting 16 | 1.5h | 2014-12-16 10:30 | 2014-12-16 12:00 | 110 | 0d |  | must finish on 2014-12-16 12:00 | Leo; Nacho; Eze; Lucas; Marcos | 7.5h | 75 |
| 112 | 1.17.5 | Realizar retrospective meeting 16 | 0.5h | 2014-12-16 11:30 | 2014-12-16 12:00 | 111 | -0.12d | 0d | must finish on 2014-12-16 12:00 | Leo; Nacho; Eze; Lucas; Marcos | 2.5h | 25 |
| 113 | 19 | **Sprint 17** | 6d | 2014-12-18 08:00 | 2014-12-30 12:00 | 108 | 0d |  |  |  | 80h | 800 |
| 114 | 1.18.1 | Realizar planning meeting 19 | 3h | 2014-12-18 08:00 | 2014-12-18 11:00 | 112 | 0d |  | must start on 2014-12-18 08:00 | Leo; Nacho; Eze; Lucas; Marcos | 15h | 150 |
| 115 | 1.18.2 | Corregir bugs sprint anterior 16 | 3h | 2014-12-18 11:00 | 2014-12-21 10:00 | 114 | 2.12d | 0d | start no earlier than 2014-12-18 08:00 | Leo; Nacho; Eze; Lucas; Marcos | 15h | 150 |
| 116 | 1.18.3 | Construccion de SW | 8h | 2014-12-21 10:00 | 2014-12-25 10:00 | 115 | 2.12d |  | start no earlier than 2014-05-22 08:00 | Leo; Nacho; Eze; Lucas; Marcos | 40h | 400 |
| 117 | 1.18.4 | Realizar review meeting 17 | 1.5h | 2014-12-30 10:30 | 2014-12-30 12:00 | 116 | 0d |  | must finish on 2014-12-30 12:00 | Leo; Nacho; Eze; Lucas; Marcos | 7.5h | 75 |
| 118 | 1.18.5 | Realizar retrospective meeting 17 | 0.5h | 2014-12-30 11:30 | 2014-12-30 12:00 | 117 | -0.12d | 0d | must finish on 2014-12-30 12:00 | Leo; Nacho; Eze; Lucas; Marcos | 2.5h | 25 |
| 119 | 20 | **Sprint 18** | 6d | 2015-01-01 08:00 | 2015-01-13 12:00 | 114 | 0d |  |  |  | 80h | 800 |
| 120 | 1.19.1 | Realizar planning meeting 20 | 3h | 2015-01-01 08:00 | 2015-01-01 11:00 | 118 | 0d |  | must start on 2015-01-01 08:00 | Leo; Nacho; Eze; Lucas; Marcos | 15h | 150 |
| 121 | 1.19.2 | Corregir bugs sprint anterior 17 | 3h | 2015-01-01 11:00 | 2015-01-04 10:00 | 120 | 2.12d | 0d | start no earlier than 2015-01-01 08:00 | Leo; Nacho; Eze; Lucas; Marcos | 15h | 150 |
| 122 | 1.19.3 | Construccion de SW | 8h | 2015-01-04 10:00 | 2015-01-08 10:00 | 121 | 2.12d |  | start no earlier than 2014-05-22 08:00 | Leo; Nacho; Eze; Lucas; Marcos | 40h | 400 |
| 123 | 1.19.4 | Realizar review meeting 18 | 1.5h | 2015-01-13 10:30 | 2015-01-13 12:00 | 122 | 0d |  | must finish on 2015-01-13 12:00 | Leo; Nacho; Eze; Lucas; Marcos | 7.5h | 75 |
| 124 | 1.19.5 | Realizar retrospective meeting 18 | 0.5h | 2015-01-13 11:30 | 2015-01-13 12:00 | 123 | -0.12d | 0d | must finish on 2015-01-13 12:00 | Leo; Nacho; Eze; Lucas; Marcos | 2.5h | 25 |

| ID | WBS | Task | Duration | Start | Finish | Predecessors | Total slack | Free slack | Constraint | Resources | Work | Cost |
| --- | --- | --- | --- | --- | --- | --- | --- | --- | --- | --- | --- | --- |
| 125 | 21 | **Sprint 19** | 6d | 2015-01-15 08:00 | 2015-01-27 12:00 | 120 | 0d |  |  |  | 80h | 770 |
| 126 | 1.20.1 | Realizar planning meeting 21 | 3h | 2015-01-15 08:00 | 2015-01-15 11:00 | 124 | 0d |  | must start on 2015-01-15 08:00 | Nacho; Eze; Lucas; Marcos | 15h | 120 |
| 127 | 1.20.2 | Corregir bugs sprint anterior 18 | 3h | 2015-01-15 11:00 | 2015-01-18 10:00 | 126 | 2.12d | 0d | start no earlier than 2015-01-15 08:00 | Leo; Nacho; Eze; Lucas; Marcos | 15h | 150 |
| 128 | 1.20.3 | Construccion de SW | 8h | 2015-01-18 10:00 | 2015-01-22 10:00 | 127 | 2.12d |  | start no earlier than 2014-05-22 08:00 | Leo; Nacho; Eze; Lucas; Marcos | 40h | 400 |
| 129 | 1.20.4 | Realizar review meeting 19 | 1.5h | 2015-01-27 10:30 | 2015-01-27 12:00 | 128 | 0d |  | must finish on 2015-01-27 12:00 | Leo; Nacho; Eze; Lucas; Marcos | 7.5h | 75 |
| 130 | 1.20.5 | Realizar retrospective meeting 19 | 0.5h | 2015-01-27 11:30 | 2015-01-27 12:00 | 129 | -0.12d | 0d | must finish on 2015-01-27 12:00 | Leo; Nacho; Eze; Lucas; Marcos | 2.5h | 25 |
| 131 | 22 | **Sprint 20** | 6d | 2015-01-29 08:00 | 2015-02-10 12:00 |  | 0d |  |  |  | 80h | 800 |
| 132 | 1.21.1 | Realizar planning meeting 22 | 3h | 2015-01-29 08:00 | 2015-01-29 11:00 | 130 | 0d |  | must start on 2015-01-29 08:00 | Leo; Nacho; Eze; Lucas; Marcos | 15h | 150 |
| 133 | 1.21.2 | Corregir bugs sprint anterior 19 | 3h | 2015-01-29 11:00 | 2015-02-01 10:00 | 132 | 2.12d | 0d | start no earlier than 2015-01-29 08:00 | Leo; Nacho; Eze; Lucas; Marcos | 15h | 150 |
| 134 | 1.21.3 | Construccion de SW | 8h | 2015-02-01 10:00 | 2015-02-05 10:00 | 133 | 2.12d |  | start no earlier than 2014-05-22 08:00 | Leo; Nacho; Eze; Lucas; Marcos | 40h | 400 |
| 135 | 1.21.4 | Realizar review meeting 20 | 1.5h | 2015-02-10 10:30 | 2015-02-10 12:00 | 134 | 0d |  | must finish on 2015-02-10 12:00 | Leo; Nacho; Eze; Lucas; Marcos | 7.5h | 75 |
| 136 | 1.21.5 | Realizar retrospective meeting 20 | 0.5h | 2015-02-10 11:30 | 2015-02-10 12:00 | 135 | -0.12d | 0d | must finish on 2015-02-10 12:00 | Leo; Nacho; Eze; Lucas; Marcos | 2.5h | 25 |
